# Tidsplan for SMDB-projekt (2007)

How a schedule from MS Project changed from version to version. A marks actual dates.

## Version 1 (data date 2020-05-27, saved 2026-09-10)

Note of the change: Tilføjer tidsplan-tool

| ID | WBS | Task | Duration | Start | Finish | Predecessors | Total float | Constraint |
| --- | --- | --- | --- | --- | --- | --- | --- | --- |
| 1 | 1 | **Udformning af udbudsmateriale** | 202d | 2025-10-07 | 2026-10-01 |  | 0d |  |
| 2 |  | 0. Initiering af udbud | 0d | 2025-10-07 | 2025-10-07 |  | 391.88d |  |
| 3 |  | Opstartsmøde | 0d | 2025-10-07 | 2025-10-07 |  | 0d |  |
| 4 |  | Forberedelse planlægningsmøde | 6d | 2025-10-07 | 2025-10-15 | 3 | 0d |  |
| 5 |  | Planlægningsmøde | 0d | 2025-10-15 | 2025-10-15 | 4 | 0d |  |
| 6 |  | Forberedelse WS1 | 7d | 2025-10-16 | 2025-10-24 | 5 | 0d |  |
| 7 |  | 1. Workshop - Rammesætning/blueprint og udbudstrategi | 0d | 2025-10-24 | 2025-10-24 | 6 | 0d |  |
| 8 |  | Forberedelse WS2 | 6d | 2025-10-27 | 2025-11-03 | 7 | 0d |  |
| 9 |  | 2. Workshop - Kravstruktur og overordnet kravgruppering (kravspecifikation ) del 1 | 0d | 2025-11-03 | 2025-11-03 | 8 | 0d |  |
| 10 |  | Forberedelse WS3 | 11d | 2025-11-04 | 2025-11-18 | 9 | 0d |  |
| 11 |  | 3. Workshop - Samarbejdsorganisation, kundens ydelser, forpligtelser ved ophør og krav til dokumentation | 0d | 2025-11-18 | 2025-11-18 | 10 | 0d |  |
| 12 |  | Forberedelse WS4 | 11d | 2025-11-19 | 2025-12-10 | 11 | 0d |  |
| 13 |  | 4. Workshop - Projektdimension tidsplan og prøver | 0d | 2025-12-10 | 2025-12-10 | 12 | 0d |  |
| 14 |  | Forberedelse WS5 | 8d | 2025-12-11 | 2026-01-05 | 13 | 0d |  |
| 15 |  | 5. Workshop - Kundens IT-miljø herunder især driftsforhold | 0d | 2026-01-05 | 2026-01-05 | 14 | 0d |  |
| 16 |  | Forberedelse WS6 | 15d | 2026-01-06 | 2026-01-26 | 15 | 0d |  |
| 17 |  | 6. Workshop - Leverancebeskrivelse (Kravspecifikation) del 2 | 0d | 2026-01-26 | 2026-01-26 | 16 | 0d |  |
| 18 |  | Serie af kravmøder 9/2, 16/ 2 og 20/2 | 15d | 2026-01-27 | 2026-02-23 | 17 | 0d |  |
| 19 |  | 6a Workshop - Struktur og opsamling | 0d | 2026-02-23 | 2026-02-23 | 18 | 0d |  |
| 20 |  | Forberedelse WS7 | 4d | 2026-02-24 | 2026-03-09 | 19 | 0d |  |
| 21 |  | 7. Workshop - . Workshop - Vedligehold , support, servicemål | 0d | 2026-03-09 | 2026-03-09 | 20 | 0d |  |
| 22 |  | Forberedelse WS8 | 5d | 2026-03-10 | 2026-03-16 | 21 | 0d |  |
| 23 |  | 8. Workshop - Leverancebeskrivelse (Kravspecifikation) del 3 | 0d | 2026-03-16 | 2026-03-16 | 22 | 0d |  |
| 24 |  | Forberedelse WS9 | 5d | 2026-03-17 | 2026-03-23 | 23 | 0d |  |
| 25 |  | 9. Workshop- Kravspec del 4 | 0d | 2026-03-23 | 2026-03-23 | 24 | 0d |  |
| 26 |  | Forberedelse WS10 | 8d | 2026-03-24 | 2026-04-10 | 25 | 0d |  |
| 27 |  | Møde 13/4 samt efterfølgende proceser og justering af udbudsmaterialemateriale | 4d | 2026-04-13 | 2026-04-16 | 26 | 0d |  |
| 28 |  | 10. Workshop - Vedr. Bilag 1 og bilag 14 | 0d | 2026-04-16 | 2026-04-16 | 27 | 0d |  |
| 29 |  | Forberedelse | 3d | 2026-04-17 | 2026-04-21 | 28 | 0d |  |
| 30 |  | 11. Workshop Opsamling vedr. Kravspecifikation del 5 | 0d | 2026-04-21 | 2026-04-21 | 29 | 0d |  |
| 31 |  | Forberedelse | 6d | 2026-04-22 | 2026-04-29 | 30 | 0d |  |
| 32 |  | 12. Workshop - Kontrakten del 1 samt databehandleraftale | 0d | 2026-04-29 | 2026-04-29 | 31 | 0d |  |
| 33 |  | Forberedelse | 9d | 2026-04-30 | 2026-05-12 | 32 | 0d |  |
| 34 |  | 13. Workshop - Vedr. Bilag 5 og 6 | 0d | 2026-05-12 | 2026-05-12 | 33 | 0d |  |
| 35 |  | Forberedelse | 3d | 2026-05-13 | 2026-05-19 | 34 | 0d |  |
| 36 |  | 14. Workshop - Kontrakten del 2 | 0d | 2026-05-19 | 2026-05-19 | 35 | 0d |  |
| 37 |  | Forberedelse | 4d | 2026-05-20 | 2026-05-26 | 36 | 0d |  |
| 38 |  | 15. Workshop - Vederlag | 0d | 2026-05-26 | 2026-05-26 | 37 | 0d |  |
| 39 |  | Forberedelse | 5d | 2026-05-27 | 2026-06-02 | 38 | 0d |  |
| 40 |  | 16. Workshop Bekendtgørelse, udbudsbetingelser (herunder tildelingskriterier og evalueringsmodel) samt ekstra tjek af vederlag | 0d | 2026-06-02 | 2026-06-02 | 39 | 0d |  |
| 41 |  | Forberedelse | 4d | 2026-06-03 | 2026-06-08 | 40 | 0d |  |
| 42 |  | 17. Workshop - Samlet review af udbudsmateriale | 0d | 2026-06-08 | 2026-06-08 | 41 | 0d |  |
| 43 |  | Evt justering af materialet | 3d | 2026-06-09 | 2026-06-11 | 42 | 0d |  |
| 44 |  | Godkendelse styregruppe af samlet udbudsmateriale | 10d | 2026-06-12 | 2026-06-25 | 43 | 0d |  |
| 45 |  | Evt justering af materialet | 4d | 2026-06-26 | 2026-07-29 | 44 | 0d |  |
| 46 |  | Reviewmøde - opsamling fra LMST reviewrunde | 0d | 2026-07-29 | 2026-07-29 | 45 | 0d |  |
| 47 |  | Justering | 9d | 2026-07-30 | 2026-08-11 | 46 | 0d |  |
| 48 |  | Statusmøde vedr. Leverancevederlag etc. | 0d | 2026-08-11 | 2026-08-11 | 47 | 0d |  |
| 49 |  | Justering | 7d | 2026-08-12 | 2026-08-20 | 48 | 0d |  |
| 50 |  | Samlet reviewmøde | 0d | 2026-08-20 | 2026-08-20 | 49 | 0d |  |
| 51 |  | Justering | 5d | 2026-08-21 | 2026-08-27 | 50 | 0d |  |
| 52 |  | Styregrupppemøde | 0d | 2026-08-27 | 2026-08-27 | 51 | 0d |  |
| 53 |  | Justering | 25d | 2026-08-28 | 2026-10-01 | 52 | 0d |  |
| 54 |  | Milepæl: Indrykning af udbudsbekendtgørelse og publicering af det samlede udbudsmateriale | 0d | 2026-10-01 | 2026-10-01 | 53 | 0d |  |
| 55 | 2 | **Prækvalifikationsfase** | 41d | 2026-10-02 | 2026-12-04 |  | 0d |  |
| 56 |  | Leverandøren udarbejder prækvalifikation | 22d | 2026-10-02 | 2026-11-09 | 54 | 0d |  |
| 57 |  | Spørgsmål svar LMST | 22d | 2026-10-02 | 2026-11-09 |  | 167.88d | start no earlier than 2026-10-02 |
| 58 |  | Modtagelse af prækvalifikationsmateriale | 0d | 2026-11-09 | 2026-11-09 | 56 | 0d |  |
| 59 |  | Vurdering og indstilling vedr. prækval | 16d | 2026-11-10 | 2026-12-01 | 58 | 0d |  |
| 60 |  | Godkendelse af indstilling vedr prækval | 3d | 2026-12-02 | 2026-12-04 | 59 | 0d |  |
| 61 |  | Milepæl: Udarbejdelse af afslagsbreve + opfordring til afgivelse af indledende tilbud | 0d | 2026-12-04 | 2026-12-04 | 60 | 0d |  |
| 62 | 3 | **Tilbudsfasen (indledende tilbud)** | 38d | 2026-12-07 | 2027-02-08 |  | 0d |  |
| 63 |  | Tilbudsgivere udarbejder tilbud | 25d | 2026-12-07 | 2027-01-20 | 61 | 0d |  |
| 64 |  | Spørgsmål svar LMST før jul | 10d | 2026-12-07 | 2026-12-18 | 61 | 138.88d |  |
| 65 |  | Spørgsmål svar LMST efter jul | 5d | 2027-01-04 | 2027-01-08 |  | 8d | start no earlier than 2027-01-04 |
| 66 |  | Modtagelse af tilbudsmateriale | 0d | 2027-01-20 | 2027-01-20 | 63, 65 | 0d |  |
| 67 |  | Evaluering af tilbud og udarbejdelse af spørgsmål til forhandlingsrunden (beslutning om forhandling) | 13d | 2027-01-21 | 2027-02-08 | 66 | 0d |  |
| 68 | 4 | **Forhandlingsrunde 1** | 18d | 2027-02-09 | 2027-03-11 |  | 0d |  |
| 69 |  | Forventet tidspunkt for fremsendelse af diskussionsliste og agenda mv. til Tilbudsgiver 1, 2 og 3 | 4d | 2027-02-09 | 2027-02-12 | 67 | 0d |  |
| 70 |  | Dialogmøder med tilbudsgiver 1, 2 og 3 | 5d | 2027-02-22 | 2027-02-26 | 69 | 0d |  |

| ID | WBS | Task | Duration | Start | Finish | Predecessors | Total float | Constraint |
| --- | --- | --- | --- | --- | --- | --- | --- | --- |
| 71 |  | Revidering af udbudsmateriale | 9d | 2027-03-01 | 2027-03-11 | 70 | 0d |  |
| 72 |  | Forventet tidspunkt for meddelelse om første reviderede tilbud samt udsendelse af evt. revideret udbudsmateriale | 0d | 2027-03-11 | 2027-03-11 | 71 | 0d |  |
| 73 | 5 | **Tilbudsfasen (endeligt tilbud)** | 86d | 2027-03-12 | 2027-08-12 |  | 0d |  |
| 74 |  | Tilbudsgivere udarbejder tilbud (frist vurderes konkret I relation til karakteren af ændringer I udbudsmaterialet) | 23d | 2027-03-12 | 2027-04-16 | 72 | 0d |  |
| 75 |  | Spørgsmål svar LMST | 17d | 2027-03-15 | 2027-04-09 |  | 74.88d | start no earlier than 2027-03-15 |
| 76 |  | Modtagelse af endeligt tilbud | 0d | 2027-04-16 | 2027-04-16 | 74 | 0d |  |
| 77 |  | Evaluering af endelige tilbud | 12d | 2027-04-19 | 2027-05-04 | 76 | 0d |  |
| 78 |  | Udarbejdelse af indstillingsnotat projektteam | 10d | 2027-05-05 | 2027-05-19 | 77 | 0d |  |
| 79 |  | Proces med styregruppe og digitaliseringsboard (4 uger) | 25d | 2027-05-20 | 2027-06-23 | 78 | 0d |  |
| 80 |  | Verifikation af ESPD (ligger uden for vores kontrol) | 10d | 2027-06-24 | 2027-08-04 | 79 | 0d |  |
| 81 |  | Tjek af verifikation af ESPD og godkendelse af indstilling | 4d | 2027-08-05 | 2027-08-10 | 80 | 0d |  |
| 82 |  | Udarbejdelse af afslagsbreve | 2d | 2027-08-11 | 2027-08-12 | 81 | 0d |  |
| 83 |  | Milepæl: Udmelding til tilbudsgivere | 0d | 2027-08-12 | 2027-08-12 | 82 | 0d |  |
| 84 |  | Standstill | 12d | 2027-08-13 | 2027-08-24 | 83 | 0d |  |
| 85 |  | Milepæl: Tidligst mulige kontraktunderskrivelse | 0d | 2027-08-24 | 2027-08-24 | 84 | 0d |  |

## Version 2 (data date 2020-05-27, saved 2026-09-16)

Note of the change: Tidsplan-tool: fjern gammel dvr_tidsplan.py-renderer og forældet materiale

Last finish 2027-08-24 → 2027-06-30 (-55d).

Changed:

| ID | Task | Start | Finish | Duration | Other |
| --- | --- | --- | --- | --- | --- |
| 73 | **Tilbudsfasen (endeligt tilbud)** |  | 2027-08-12 → 2027-06-18 (-55d) | 86d → 67d |  |
| 79 | Proces med styregruppe |  | 2027-06-23 → 2027-05-26 (-28d) | 25d → 5d | was named Proces med styregruppe og digitaliseringsboard (4 uger) |
| 80 | Verifikation af ESPD (ligger uden for vores kontrol) | 2027-06-24 → 2027-05-27 (-28d) | 2027-08-04 → 2027-06-09 (-56d) |  |  |
| 81 | Tjek af verifikation af ESPD og godkendelse af indstilling | 2027-08-05 → 2027-06-10 (-56d) | 2027-08-10 → 2027-06-16 (-55d) | 4d → 5d |  |
| 82 | Udarbejdelse af afslagsbreve | 2027-08-11 → 2027-06-17 (-55d) | 2027-08-12 → 2027-06-18 (-55d) |  |  |
| 83 | Milepæl: Udmelding til tilbudsgivere | 2027-08-12 → 2027-06-18 (-55d) | 2027-08-12 → 2027-06-18 (-55d) |  |  |
| 84 | Standstill | 2027-08-13 → 2027-06-19 (-55d) | 2027-08-24 → 2027-06-30 (-55d) |  |  |
| 85 | Milepæl: Tidligst mulige kontraktunderskrivelse | 2027-08-24 → 2027-06-30 (-55d) | 2027-08-24 → 2027-06-30 (-55d) |  |  |
